# Antibot Ad Arte

How a schedule from GanttProject changed from version to version. A marks actual dates.

## Version 1 (saved 2026-04-28)

Note of the change: docs: gantt antibot in formato GanttProject (.gan)

| ID | WBS | Task | Duration | Start | Finish | Predecessors |
| --- | --- | --- | --- | --- | --- | --- |
| 1 |  | Discovery e design | 2d | 2026-04-28 | 2026-04-29 |  |
| 2 |  | Build core framework | 3d | 2026-04-30 | 2026-05-04 | 1 |
| 3 | 3 | **Implementazione BOT** | 4d | 2026-05-05 | 2026-05-08 | 2 |
| 4 |  | HTTP (BOT-1 DoS + BOT-2 ATO) | 3d | 2026-05-05 | 2026-05-07 |  |
| 5 |  | Browser (BOT-4 Content + BOT-5 Price) | 4d | 2026-05-05 | 2026-05-08 |  |
| 6 |  | Admin API (BOT-3 Registration) | 3d | 2026-05-05 | 2026-05-07 |  |
| 7 | 4 | **Infrastruttura e credenziali** | 2d | 2026-05-05 | 2026-05-06 | 2 |
| 8 |  | Estrazione credenziali collaudo | 1d | 2026-05-05 | 2026-05-05 |  |
| 9 |  | Provisioning Linode fleet | 2d | 2026-05-06 | 2026-05-07 |  |
| 10 | 5 | **SOC + esecuzione test** | 3d | 2026-05-11 | 2026-05-13 | 3, 7 |
| 11 |  | Mail SOC + attesa whitelist | 2d | 2026-05-11 | 2026-05-12 |  |
| 12 |  | Run BOT-2/3/4/5 + BOT-1 con pre-mortem | 1d | 2026-05-13 | 2026-05-13 |  |
| 13 |  | Report + delivery | 2d | 2026-05-14 | 2026-05-15 | 10 |

## Version 2 (saved 2026-04-28)

Note of the change: docs: gantt v2 - PSN ticket parallel + start 2026-04-27 (#11)

Last finish 2026-05-15 → 2026-05-12 (-3d).

Added:

| ID | Task | Duration | Start | Finish | Predecessors | Resources |
| --- | --- | --- | --- | --- | --- | --- |
| 2 | Apertura ticket PSN whitelist WAF | 1d | 2026-04-29 | 2026-04-29 | 1 | Dev |
| 3 | Wait PSN + whitelist applicata | 2d | 2026-04-30 | 2026-05-01 | 2 | PSN |
| 13 | Report e delivery | 2d | 2026-05-11 | 2026-05-12 | 12 | Dev |

Removed: 11 Mail SOC + attesa whitelist; 12 Run BOT-2/3/4/5 + BOT-1 con pre-mortem; 13 Report + delivery

Changed:

| ID | Task | Start | Finish | Duration | Predecessors | Other |
| --- | --- | --- | --- | --- | --- | --- |
| 1 | Discovery e design | 2026-04-28 → 2026-04-27 (-1d) | 2026-04-29 → 2026-04-28 (-1d) |  |  |  |
| 4 | Build core framework | 2026-04-30 → 2026-04-29 (-1d) | 2026-05-04 → 2026-05-01 (-3d) |  |  |  |
| 5 | **Implementazione BOT** | 2026-05-05 → 2026-05-04 (-1d) | 2026-05-08 → 2026-05-07 (-1d) |  |  |  |
| 6 | HTTP (BOT-1 DoS + BOT-2 ATO) | 2026-05-05 → 2026-05-04 (-1d) | 2026-05-07 → 2026-05-06 (-1d) |  |  |  |
| 7 | Browser (BOT-4 Content + BOT-5 Price) | 2026-05-05 → 2026-05-04 (-1d) | 2026-05-08 → 2026-05-07 (-1d) |  |  |  |
| 8 | Admin API (BOT-3 Registration) | 2026-05-05 → 2026-05-04 (-1d) | 2026-05-07 → 2026-05-06 (-1d) |  |  |  |
| 9 | **Infrastruttura e credenziali** | 2026-05-05 → 2026-05-04 (-1d) | 2026-05-06 → 2026-05-05 (-1d) |  |  |  |
| 10 | Estrazione credenziali collaudo | 2026-05-05 → 2026-05-04 (-1d) | 2026-05-05 → 2026-05-04 (-1d) |  |  |  |
| 11 | Provisioning Linode fleet | 2026-05-06 → 2026-05-05 (-1d) | 2026-05-07 → 2026-05-06 (-1d) |  |  |  |
| 12 | Esecuzione test | 2026-05-11 → 2026-05-08 (-3d) | 2026-05-13 → 2026-05-08 (-5d) | 3d → 1d | 5, 9 → 3, 5, 9 | was named SOC + esecuzione test; resources none → Dev |

## Version 3 (saved 2026-04-28)

Note of the change: docs: gantt parse fix - integer task IDs only

Last finish stays 2026-05-12.

Added:

| ID | Task | Duration | Start | Finish | Resources |
| --- | --- | --- | --- | --- | --- |
| 7 | Browser (BOT-4 + BOT-5) | 4d | 2026-05-04 | 2026-05-07 | Dev |

Removed: 7 Browser (BOT-4 Content + BOT-5 Price)

## Version 4 (saved 2026-04-28)

Note of the change: docs: gantt - durate +50% (start 2026-04-27, end 2026-05-21) (#13)

Last finish 2026-05-12 → 2026-05-21 (+9d).

Changed:

| ID | Task | Start | Finish | Duration |
| --- | --- | --- | --- | --- |
| 1 | Discovery e design |  | 2026-04-28 → 2026-04-29 (+1d) | 2d → 3d |
| 2 | Apertura ticket PSN whitelist WAF | 2026-04-29 → 2026-04-30 (+1d) | 2026-04-29 → 2026-04-30 (+1d) |  |
| 3 | Wait PSN + whitelist applicata | 2026-04-30 → 2026-05-01 (+1d) | 2026-05-01 → 2026-05-03 (+2d) | 2d → 3d |
| 4 | Build core framework | 2026-04-29 → 2026-04-30 (+1d) | 2026-05-01 → 2026-05-04 (+3d) | 3d → 5d |
| 5 | **Implementazione BOT** | 2026-05-04 → 2026-05-07 (+3d) | 2026-05-07 → 2026-05-12 (+5d) | 4d → 6d |
| 6 | HTTP (BOT-1 DoS + BOT-2 ATO) | 2026-05-04 → 2026-05-07 (+3d) | 2026-05-06 → 2026-05-11 (+5d) | 3d → 5d |
| 7 | Browser (BOT-4 + BOT-5) | 2026-05-04 → 2026-05-07 (+3d) | 2026-05-07 → 2026-05-12 (+5d) | 4d → 6d |
| 8 | Admin API (BOT-3 Registration) | 2026-05-04 → 2026-05-07 (+3d) | 2026-05-06 → 2026-05-11 (+5d) | 3d → 5d |
| 9 | **Infrastruttura e credenziali** | 2026-05-04 → 2026-05-07 (+3d) | 2026-05-05 → 2026-05-11 (+6d) | 2d → 5d |
| 10 | Estrazione credenziali collaudo | 2026-05-04 → 2026-05-07 (+3d) | 2026-05-04 → 2026-05-08 (+4d) | 1d → 2d |
| 11 | Provisioning Linode fleet | 2026-05-05 → 2026-05-11 (+6d) | 2026-05-06 → 2026-05-13 (+7d) | 2d → 3d |
| 12 | Esecuzione test | 2026-05-08 → 2026-05-15 (+7d) | 2026-05-08 → 2026-05-16 (+8d) | 1d → 2d |
| 13 | Report e delivery | 2026-05-11 → 2026-05-19 (+8d) | 2026-05-12 → 2026-05-21 (+9d) | 2d → 3d |
